# 3.6掌上公交直接成本估算

Schedule from MS Project, 2019-03-12 to 2019-05-06, scheduled back from the finish, costs in ¥.

## Calendars

- “标准”的副本: Mon-Fri 08:00-12:00, 13:00-17:00; Sat-Sun off.

## Resources

| Resource | Rate |
| --- | --- |
| 项目经理 | 80 |
| 产品经理 | 50 |
| UI/UE设计师 | 50 |
| 软件架构师 | 50 |
| 测试主管 | 50 |
| 运营主管 | 50 |
| 项目经理 | 50 |
| 程序员1 | 30 |
| 程序员2 | 30 |
| 程序员3 | 30 |
| 测试人员1 | 30 |
| 测试人员2 | 30 |
| 程序员4 | 30 |
| 程序员5 | 30 |
| 程序员6 | 30 |
| 程序员7 | 30 |
| 程序员8 | 30 |
| 团队建设费 |  |
| 测试货物 | 30 |
| 间接成本 |  |
| 储备 |  |

## Schedule

| ID | WBS | Task | Duration | Start | Finish | Predecessors | Total slack | Constraint | Resources | Work | Cost |
| --- | --- | --- | --- | --- | --- | --- | --- | --- | --- | --- | --- |
| 1 | 1 | **启动** | 6d | 2019-03-12 | 2019-03-19 |  | 0d | as late as possible |  | 120h | 7,440 |
| 2 | 1.1 | 任命项目经理 | 1d | 2019-03-12 | 2019-03-12 |  | 0d |  | 项目经理 | 8h | 640 |
| 3 | 1.2 | 组建核心团队 | 1d | 2019-03-13 | 2019-03-13 | 2 | 0d |  | UI/UE设计师; 测试主管; 产品经理; 软件架构师; 项目经理; 运营主管 | 48h | 2,640 |
| 4 | 1.3 | 干系人分析 | 1d | 2019-03-14 | 2019-03-14 | 3 | 0d |  | 产品经理; 项目经理; 运营主管 | 24h | 1,440 |
| 5 | 1.4 | 确定项目发起人 | 2d | 2019-03-15 | 2019-03-18 | 4 | 0d |  | 项目经理 [50%] | 8h | 640 |
| 6 | 1.5 | 制订章程 | 2d | 2019-03-15 | 2019-03-18 | 5FF | 0d |  | 项目经理 [50%] | 8h | 640 |
| 7 | 1.6 | 项目启动大会 | 1d | 2019-03-19 | 2019-03-19 | 6 | 0d |  | 项目经理; 产品经理; 运营主管 | 24h | 1,440 |
| 8 | 2 | **规划** | 22d | 2019-03-20 | 2019-04-18 |  | 0d | as late as possible |  | 240h | 16,240 |
| 9 | 2.1 | **规划范围** | 3d | 2019-03-20 | 2019-03-22 |  | 0d | as late as possible |  | 48h | 3,120 |
| 10 | 2.1.1 | 制定需求说明书 | 1d | 2019-03-20 | 2019-03-20 | 7 | 0d |  | 项目经理; 软件架构师 | 16h | 1,040 |
| 11 | 2.1.2 | 页面设计 | 1d | 2019-03-20 | 2019-03-20 | 10FF | 32d |  | UI/UE设计师 | 8h | 400 |
| 12 | 2.1.3 | 范围说明书 | 1d | 2019-03-21 | 2019-03-21 | 10 | 0d |  | 项目经理; 产品经理 | 16h | 1,040 |
| 13 | 2.1.4 | 创建WBS | 1d | 2019-03-22 | 2019-03-22 | 12 | 0d |  | 项目经理 | 8h | 640 |
| 14 | 2.2 | **规划时间** | 5d | 2019-03-25 | 2019-03-29 |  | 0d | as late as possible |  | 40h | 3,200 |
| 15 | 2.2.1 | 排列工作包顺序 | 1d | 2019-03-25 | 2019-03-25 | 13 | 0d |  | 项目经理 | 8h | 640 |
| 16 | 2.2.2 | 估算资源 | 1d | 2019-03-26 | 2019-03-26 | 15 | 0d |  | 项目经理 | 8h | 640 |
| 17 | 2.2.3 | 估算持续时间 | 1d | 2019-03-27 | 2019-03-27 | 16 | 0d |  | 项目经理 | 8h | 640 |
| 18 | 2.2.4 | 制定进度计划 | 2d | 2019-03-28 | 2019-03-29 | 17 | 0d |  | 项目经理 | 16h | 1,280 |
| 19 | 2.3 | **规划成本** | 3d | 2019-04-01 | 2019-04-03 |  | 0d | as late as possible |  | 24h | 1,920 |
| 20 | 2.3.1 | 项目成本估算 | 1d | 2019-04-01 | 2019-04-01 | 18 | 0d | finish no later than 2019-04-04 | 项目经理 | 8h | 640 |
| 21 | 2.3.2 | 项目预算 | 2d | 2019-04-02 | 2019-04-03 | 20 | 0d |  | 项目经理 | 16h | 1,280 |
| 22 | 2.4 | **规划质量** | 3d | 2019-04-04 | 2019-04-08 |  | 0d | as late as possible |  | 40h | 1,680 |
| 23 | 2.4.1 | 制定测试计划 | 2d | 2019-04-04 | 2019-04-05 | 21 | 0d |  | 测试主管 | 16h | 800 |
| 24 | 2.4.2 | 设计测试用例 | 1d | 2019-04-08 | 2019-04-08 | 23 | 0d |  | 测试人员1; 测试人员2; 测试主管 | 24h | 880 |

| ID | WBS | Task | Duration | Start | Finish | Predecessors | Total slack | Free slack | Constraint | Resources | Work | Cost |
| --- | --- | --- | --- | --- | --- | --- | --- | --- | --- | --- | --- | --- |
| 25 | 2.5 | **规划人力资源** | 8d | 2019-04-09 | 2019-04-18 |  | 0d |  | as late as possible |  | 88h | 6,320 |
| 26 | 2.5.1 | 制定人力资源计划 | 2d | 2019-04-09 | 2019-04-10 | 24 | 0d |  |  | 项目经理 | 16h | 1,280 |
| 27 | 2.5.2 | 制定人力资源管理计划 | 2d | 2019-04-11 | 2019-04-12 | 26 | 0d |  |  | 项目经理 | 16h | 1,280 |
| 28 | 2.5.3 | **规划风险** | 3d | 2019-04-15 | 2019-04-17 |  | 0d |  | as late as possible |  | 48h | 3,120 |
| 29 | 2.5.3.1 | 预估风险 | 1d | 2019-04-15 | 2019-04-15 | 27 | 0d |  |  | 产品经理; 项目经理 | 16h | 1,040 |
| 30 | 2.5.3.2 | 制定风险应对策略 | 1d | 2019-04-16 | 2019-04-16 | 29 | 0d |  |  | 产品经理; 项目经理 | 16h | 1,040 |
| 31 | 2.5.3.3 | 制定风险登记册 | 1d | 2019-04-17 | 2019-04-17 | 30 | 0d |  |  | 产品经理; 项目经理 | 16h | 1,040 |
| 32 | 2.5.4 | 规划整合 | 1d | 2019-04-18 | 2019-04-18 | 31 | 0d |  |  | 项目经理 | 8h | 640 |
| 33 | 3 | **执行与监控** | 10d | 2019-04-19 | 2019-05-02 |  | 0d |  | as late as possible |  | 288h | 14,240 |
| 34 | 3.1 | 组建项目团队 | 1d | 2019-04-19 | 2019-04-19 | 32 | 0d |  |  | UI/UE设计师; 测试主管; 软件架构师; 项目经理 | 32h | 1,840 |
| 35 | 3.2 | **项目执行** | 3d | 2019-04-22 | 2019-04-24 |  | 0d |  | as late as possible |  | 80h | 2,400 |
| 36 | 3.2.1 | **用户模块** | 2d | 2019-04-22 | 2019-04-23 |  | 0d |  | as late as possible |  | 32h | 960 |
| 37 | 3.2.1.1 | 登录注册 | 1d | 2019-04-22 | 2019-04-22 | 34 | 8d | 0d |  | 程序员1 | 8h | 240 |
| 38 | 3.2.1.2 | 首页 | 1d | 2019-04-23 | 2019-04-23 | 37 | 8d | 0d |  | 程序员4 | 8h | 240 |
| 39 | 3.2.1.3 | 交易 | 1d | 2019-04-23 | 2019-04-23 | 38SS | 8d | 0d |  | 程序员6 | 8h | 240 |
| 40 | 3.2.1.4 | 我的 | 1d | 2019-04-23 | 2019-04-23 | 39SS | 8d |  |  | 程序员7 | 8h | 240 |
| 41 | 3.2.2 | **商家模块** | 3d | 2019-04-22 | 2019-04-24 |  | 0d |  | as late as possible |  | 24h | 720 |
| 42 | 3.2.2.1 | 注册 | 1d | 2019-04-22 | 2019-04-22 | 34 | 7d | 0d |  | 程序员8 | 8h | 240 |
| 43 | 3.2.2.2 | 路况信息 | 1d | 2019-04-23 | 2019-04-23 | 42 | 7d | 0d |  | 程序员5 | 8h | 240 |
| 44 | 3.2.2.3 | 订单处理 | 1d | 2019-04-24 | 2019-04-24 | 43 | 7d |  |  | 程序员3 | 8h | 240 |
| 45 | 3.2.3 | **管理员模块** | 3d | 2019-04-22 | 2019-04-24 |  | 0d |  | as late as possible |  | 24h | 720 |
| 46 | 3.2.3.1 | 实时数据 | 1d | 2019-04-22 | 2019-04-22 | 34 | 0d |  |  | 程序员2 | 8h | 240 |
| 47 | 3.2.3.2 | 统计分析 | 1d | 2019-04-23 | 2019-04-23 | 46 | 0d |  |  | 程序员3 | 8h | 240 |
| 48 | 3.2.3.3 | 备份 | 1d | 2019-04-24 | 2019-04-24 | 47 | 0d |  |  | 程序员4 | 8h | 240 |

| ID | WBS | Task | Type | Duration | Start | Finish | Predecessors | Total slack | Free slack | Constraint | Resources | Work | Cost |
| --- | --- | --- | --- | --- | --- | --- | --- | --- | --- | --- | --- | --- | --- |
| 49 | 3.3 | **项目监控** |  | 3d | 2019-04-27 | 2019-04-30 |  |  |  | as late as possible |  | 96h | 5,280 |
| 50 | 3.3.1 | 各项指标监控 |  | 1d | 2019-04-25 | 2019-04-25 | 48 | -2d | 0d |  | UI/UE设计师; 测试主管; 产品经理; 软件架构师; 项目经理; 运营主管 | 48h | 2,640 |
| 51 | 3.3.2 | 监控评审 |  | 1d | 2019-04-26 | 2019-04-26 | 50 | -2d | 0d |  | 产品经理; 项目经理 | 16h | 1,040 |
| 52 | 3.3.3 | 变更评审 | manual | 1d | 2019-04-29 | 2019-04-29 | 51 |  |  |  | 产品经理; 软件架构师 | 16h | 800 |
| 53 | 3.3.4 | 例会 | manual | 1d | 2019-04-30 | 2019-04-30 | 52 |  |  |  | 测试主管; 软件架构师 | 16h | 800 |
| 54 | 3.4 | **管理干系人** |  | 3d | 2019-04-30 | 2019-05-02 |  |  |  | as late as possible |  | 32h | 1,840 |
| 55 | 3.4.1 | 发布项目信息 | manual | 1d | 2019-04-30 | 2019-04-30 | 53 |  |  |  | 产品经理; 运营主管 | 16h | 800 |
| 56 | 3.4.2 | 报告监控指标 | manual | 1d | 2019-05-01 | 2019-05-01 | 55 |  |  |  | 运营主管 | 8h | 400 |
| 57 | 3.4.3 | 干系人沟通 | manual | 1d | 2019-05-02 | 2019-05-02 | 56 |  |  |  | 项目经理 | 8h | 640 |
| 58 | 3.5 | **团队建设** |  | 2d | 2019-04-22 | 2019-04-23 |  |  |  | as late as possible |  | 48h | 2,880 |
| 59 | 3.5.1 | 培训 |  | 1d | 2019-04-22 | 2019-04-22 | 34 | 0d |  | start no later than 2019-04-22 | 运营主管; 项目经理 | 16h | 1,040 |
| 60 | 3.5.2 | 娱乐 |  | 1d | 2019-04-23 | 2019-04-23 | 34 | 1d | 0d | start no later than 2019-04-23 | 软件架构师; UI/UE设计师 | 16h | 800 |
| 61 | 3.5.3 | 沟通 |  | 1d | 2019-04-23 | 2019-04-23 | 34 | 1d | 0d | finish no later than 2019-04-23 | 运营主管; 项目经理 | 16h | 1,040 |
| 62 | 4 | **收尾** |  | 2d | 2019-05-03 | 2019-05-06 |  |  |  | as late as possible |  | 24h | 1,440 |
| 63 | 4.1 | 项目最终验收 |  | 1d | 2019-05-03 | 2019-05-03 | 57 | 1d |  |  | UI/UE设计师; 测试主管 | 16h | 800 |
| 64 | 4.2 | 项目内部收尾 |  | 1d | 2019-05-04 | 2019-05-06 | 58 | 9d | 0d | start no later than 2019-05-04 | 项目经理 | 8h | 640 |
